# Casa nueva 2 plantas — 5 ambientes — 122 tareas ejecutables

Schedule from MS Project XML.

## Schedule

| ID | WBS | Task | Duration | Predecessors |
| --- | --- | --- | --- | --- |
| 1 | 1 | **Casa nueva 2 plantas — 5 ambientes — 122 tareas ejecutables** | 1d |  |
| 2 | 1.1 | **Inicio de obra** | 1d |  |
| 3 | 1.1.1 | Terreno — Preparación general del terreno | 2d |  |
| 4 | 1.1.2 | Terreno — Limpieza inicial del terreno | 2d | 3 |
| 5 | 1.1.3 | Obra general — Armado de obrador | 2d | 4 |
| 6 | 1.1.4 | Obra general — Acopio inicial de materiales | 1d | 5 |
| 7 | 1.1.5 | Frente / servicios — Pilar de luz de obra con caja | 2d | 5 |
| 8 | 1.1.6 | Frente / servicios — Caja reglamentaria en pared | 1d | 7 |
| 9 | 1.1.7 | Obra general — Instalación provisoria de agua de obra | 1d | 5 |
| 10 | 1.1.8 | Obra general — Limpieza general de obra - semana 1 | 1d | 9 |
| 11 | 1.2 | **Movimiento de suelo y fundaciones** | 1d |  |
| 12 | 1.2.1 | Vivienda — Excavación de bases | 3d | 4 |
| 13 | 1.2.2 | Parrillero / cochera — Excavación de bases | 1d | 12 |
| 14 | 1.2.3 | Perímetro PB — Excavación de cimientos 40cm x 80cm | 3d | 12 |
| 15 | 1.2.4 | Muros interiores PB — Excavación de cimientos 40cm x 80cm | 2d | 14 |
| 16 | 1.2.5 | Interior PB — Tierra, relleno y compactación | 3d | 14, 15 |
| 17 | 1.2.6 | Exterior / patio — Tierra, relleno y compactación | 2d | 13, 14 |
| 18 | 1.2.7 | Obra general — Limpieza general de obra - semana 2 | 1d | 10, 17 |
| 19 | 1.2.8 | Vivienda — Bases | 4d | 16 |
| 20 | 1.2.9 | Columnas puntuales — Base individual | 2d | 19 |
| 21 | 1.2.10 | Fundaciones — Viga de equilibrio encofrado | 3d | 19, 20 |
| 22 | 1.2.11 | Arranque PB — Encadenado de 20 x 20 | 3d | 21 |
| 23 | 1.2.12 | Arranque de muros — Capa aisladora 3 hiladas en paredes de 30 | 2d | 22 |
| 24 | 1.2.13 | Obra general — Limpieza general de obra - semana 3 | 1d | 18, 23 |

Notes:
- 2: Fase lógica de obra. Cantidad de tareas ejecutables: 8
- 3: Nro ejecutable: 1 / Fase: Inicio de obra / Sector: Terreno / Fuente: Operativa inicial
- 4: Nro ejecutable: 2 / Fase: Inicio de obra / Sector: Terreno / Fuente: Operativa inicial / Predecesoras ejecutables: 1
- 5: Nro ejecutable: 3 / Fase: Inicio de obra / Sector: Obra general / Fuente: Operativa inicial / Predecesoras ejecutables: 2
- 6: Nro ejecutable: 4 / Fase: Inicio de obra / Sector: Obra general / Fuente: Operativa inicial / Predecesoras ejecutables: 3
- 7: Nro ejecutable: 5 / Fase: Inicio de obra / Sector: Frente / servicios / Fuente: Electricidad / Tarea catálogo: Pilar Con caja / Precio catálogo: $316.250,00 / Predecesoras ejecutables: 3
- 8: Nro ejecutable: 6 / Fase: Inicio de obra / Sector: Frente / servicios / Fuente: Electricidad / Tarea catálogo: Colocar caja reglamentaria en pared / Precio catálogo: $164.450,00 / Predecesoras ejecutables: 5
- 9: Nro ejecutable: 7 / Fase: Inicio de obra / Sector: Obra general / Fuente: Operativa inicial / Predecesoras ejecutables: 3
- 10: Nro ejecutable: 8 / Fase: Inicio de obra / Sector: Obra general / Fuente: Agregado operativo / terminación / Predecesoras ejecutables: 7 / Limpieza general periódica cada 7 días. Tarea recurrente agregada fuera del ODS para mantener orden, seguridad y avance limpio de obra.
- 11: Fase lógica de obra. Cantidad de tareas ejecutables: 13
- 12: Nro ejecutable: 9 / Fase: Movimiento de suelo y fundaciones / Sector: Vivienda / Fuente: Excavación y demolición / Tarea catálogo: Excavación de bases / Precio catálogo: $27.893,25 / Predecesoras ejecutables: 2
- 13: Nro ejecutable: 10 / Fase: Movimiento de suelo y fundaciones / Sector: Parrillero / cochera / Fuente: Excavación y demolición / Tarea catálogo: Excavación de bases / Precio catálogo: $27.893,25 / Predecesoras ejecutables: 9
- 14: Nro ejecutable: 11 / Fase: Movimiento de suelo y fundaciones / Sector: Perímetro PB / Fuente: Excavación y demolición / Tarea catálogo: Excavación de cimientos (40cm X 80 cm) / Precio catálogo: $15.812,50 / Predecesoras ejecutables: 9
- 15: Nro ejecutable: 12 / Fase: Movimiento de suelo y fundaciones / Sector: Muros interiores PB / Fuente: Excavación y demolición / Tarea catálogo: Excavación de cimientos (40cm X 80 cm) / Precio catálogo: $15.812,50 / Predecesoras ejecutables: 11
- 16: Nro ejecutable: 13 / Fase: Movimiento de suelo y fundaciones / Sector: Interior PB / Fuente: Suelos / Tarea catálogo: Tierra relleno y compactación / Precio catálogo: $13.915,00 / Predecesoras ejecutables: 11,12
- 17: Nro ejecutable: 14 / Fase: Movimiento de suelo y fundaciones / Sector: Exterior / patio / Fuente: Suelos / Tarea catálogo: Tierra relleno y compactación / Precio catálogo: $13.915,00 / Predecesoras ejecutables: 10,11
- 18: Nro ejecutable: 15 / Fase: Movimiento de suelo y fundaciones / Sector: Obra general / Fuente: Agregado operativo / terminación / Predecesoras ejecutables: 8,14 / Limpieza general periódica cada 7 días. Tarea recurrente agregada fuera del ODS para mantener orden, seguridad y avance limpio de obra.
- 19: Nro ejecutable: 16 / Fase: Movimiento de suelo y fundaciones / Sector: Vivienda / Fuente: Hormigón Armado / Tarea catálogo: Bases / Precio catálogo: $106.260,00 / Predecesoras ejecutables: 13
- 20: Nro ejecutable: 17 / Fase: Movimiento de suelo y fundaciones / Sector: Columnas puntuales / Fuente: Hormigón Armado / Tarea catálogo: Base individual / Precio catálogo: $25.300,00 / Predecesoras ejecutables: 16
- 21: Nro ejecutable: 18 / Fase: Movimiento de suelo y fundaciones / Sector: Fundaciones / Fuente: Hormigón Armado / Tarea catálogo: Viga de equilibrio encofrado / Precio catálogo: $208.725,00 / Predecesoras ejecutables: 16,17
- 22: Nro ejecutable: 19 / Fase: Movimiento de suelo y fundaciones / Sector: Arranque PB / Fuente: Hormigón Armado / Tarea catálogo: Encadenado de 20 x 20 / Precio catálogo: $208.725,00 / Predecesoras ejecutables: 18
- 23: Nro ejecutable: 20 / Fase: Movimiento de suelo y fundaciones / Sector: Arranque de muros / Fuente: Mampostería / Tarea catálogo: Capa aisladora 3 hiladas en paredes de 30 / Precio catálogo: $13.409,00 / Predecesoras ejecutables: 19
- 24: Nro ejecutable: 21 / Fase: Movimiento de suelo y fundaciones / Sector: Obra general / Fuente: Agregado operativo / terminación / Predecesoras ejecutables: 15,20 / Limpieza general periódica cada 7 días. Tarea recurrente agregada fuera del ODS para mantener orden, seguridad y avance limpio de obra.

| ID | WBS | Task | Duration | Predecessors |
| --- | --- | --- | --- | --- |
| 25 | 1.3 | **Estructura** | 1d |  |
| 26 | 1.3.1 | Planta baja — Columnas y vigas | 6d | 23 |
| 27 | 1.3.2 | Entrepiso PB / PA — Techo de viguetas en P.B | 5d | 26 |
| 28 | 1.3.3 | Escalera PB a PA — Escaleras de 16 escalones simples | 4d | 27 |
| 29 | 1.3.4 | Planta alta — Columnas y vigas | 5d | 27, 28 |
| 30 | 1.3.5 | Cubierta / terraza técnica — Losa maciza | 5d | 29 |
| 31 | 1.3.6 | Núcleo escalera — Tabiques de 15 cm | 2d | 28 |
| 32 | 1.3.7 | Baños / ductos — Tabiques de 15 cm | 2d | 31 |
| 33 | 1.3.8 | Planta alta — Encadenado de 20 x 20 | 3d | 29, 32 |
| 34 | 1.3.9 | Apoyo tanque / exterior — Base individual | 1d | 30 |
| 35 | 1.3.10 | Cochera — Piso + fratachado | 3d | 17 |
| 36 | 1.3.11 | Pluvial exterior — Albañal de hormigón armado 25x25 | 2d | 30 |
| 37 | 1.3.12 | Escalera / refuerzo secundario — Viga de equilibrio encofrado | 2d | 28 |
| 38 | 1.3.13 | Obra general — Limpieza general de obra - semana 4 | 1d | 24, 37 |
| 39 | 1.4 | **Mampostería y cubierta** | 1d |  |
| 40 | 1.4.1 | PB exterior — Paredes de ladrillo hueco portante 13 y 18 | 6d | 26, 23 |
| 41 | 1.4.2 | PB interior — Paredes de ladrillo hueco 8 y 12 | 5d | 40 |
| 42 | 1.4.3 | Cocina PB — Paredes bajo mesada | 1d | 41 |
| 43 | 1.4.4 | PA exterior — Paredes de ladrillo hueco portante 13 y 18 | 6d | 29, 33 |
| 44 | 1.4.5 | PA interior — Paredes de ladrillo hueco 8 y 12 | 5d | 43 |
| 45 | 1.4.6 | Cubierta / perímetro — Mojinetes perimetral | 3d | 43 |
| 46 | 1.4.7 | Patio — Parrillero completo | 4d | 17, 40 |
| 47 | 1.4.8 | Obra general — Limpieza general de obra - semana 5 | 1d | 38, 46 |
| 48 | 1.4.9 | Cubierta general — Techos de estructura metálica y chapa | 5d | 30, 45 |
| 49 | 1.4.10 | Cubierta general — Colocar chapas solo | 2d | 48 |
| 50 | 1.4.11 | Cubierta general — Colocar zinguería | 2d | 49 |
| 51 | 1.4.12 | Mojinetes — Membrana en mojinete | 1d | 45, 50 |
| 52 | 1.4.13 | Terraza técnica / losa — H° de pendiente molido, carpeta y membrana | 3d | 30, 34 |
| 53 | 1.4.14 | Cubierta / impermeabilización — Colocar membrana | 2d | 52 |
| 54 | 1.4.15 | Cubierta / impermeabilización — Pintar pintura asfáltica | 1d | 53 |
| 55 | 1.4.16 | Aberturas PB / PA — Colocar ventanas o premarco | 3d | 40, 43, 44 |
| 56 | 1.4.17 | Obra general — Limpieza general de obra - semana 6 | 1d | 47, 55 |

Notes:
- 25: Fase lógica de obra. Cantidad de tareas ejecutables: 13
- 26: Nro ejecutable: 22 / Fase: Estructura / Sector: Planta baja / Fuente: Hormigón Armado / Tarea catálogo: Columnas y vigas / Precio catálogo: $234.025,00 / Predecesoras ejecutables: 20
- 27: Nro ejecutable: 23 / Fase: Estructura / Sector: Entrepiso PB / PA / Fuente: Hormigón Armado / Tarea catálogo: Techo de viguetas en P.B / Precio catálogo: $18.975,00 / Predecesoras ejecutables: 22
- 28: Nro ejecutable: 24 / Fase: Estructura / Sector: Escalera PB a PA / Fuente: Hormigón Armado / Tarea catálogo: Escaleras de 16 escalones simples / Precio catálogo: $278.300,00 / Predecesoras ejecutables: 23
- 29: Nro ejecutable: 25 / Fase: Estructura / Sector: Planta alta / Fuente: Hormigón Armado / Tarea catálogo: Columnas y vigas / Precio catálogo: $234.025,00 / Predecesoras ejecutables: 23,24
- 30: Nro ejecutable: 26 / Fase: Estructura / Sector: Cubierta / terraza técnica / Fuente: Hormigón Armado / Tarea catálogo: Losa maciza / Precio catálogo: $246.675,00 / Predecesoras ejecutables: 25
- 31: Nro ejecutable: 27 / Fase: Estructura / Sector: Núcleo escalera / Fuente: Hormigón Armado / Tarea catálogo: Tabiques de 15 cm / Precio catálogo: $379.500,00 / Predecesoras ejecutables: 24
- 32: Nro ejecutable: 28 / Fase: Estructura / Sector: Baños / ductos / Fuente: Hormigón Armado / Tarea catálogo: Tabiques de 15 cm / Precio catálogo: $379.500,00 / Predecesoras ejecutables: 27
- 33: Nro ejecutable: 29 / Fase: Estructura / Sector: Planta alta / Fuente: Hormigón Armado / Tarea catálogo: Encadenado de 20 x 20 / Precio catálogo: $208.725,00 / Predecesoras ejecutables: 25,28
- 34: Nro ejecutable: 30 / Fase: Estructura / Sector: Apoyo tanque / exterior / Fuente: Hormigón Armado / Tarea catálogo: Base individual / Precio catálogo: $25.300,00 / Predecesoras ejecutables: 26
- 35: Nro ejecutable: 31 / Fase: Estructura / Sector: Cochera / Fuente: Hormigón Armado / Tarea catálogo: Piso + fratachado / Precio catálogo: $13.282,50 / Predecesoras ejecutables: 14
- 36: Nro ejecutable: 32 / Fase: Estructura / Sector: Pluvial exterior / Fuente: Hormigón Armado / Tarea catálogo: Albañal de hormigón armado 25x25 / Precio catálogo: $18.975,00 / Predecesoras ejecutables: 26
- 37: Nro ejecutable: 33 / Fase: Estructura / Sector: Escalera / refuerzo secundario / Fuente: Hormigón Armado / Tarea catálogo: Viga de equilibrio encofrado / Precio catálogo: $208.725,00 / Predecesoras ejecutables: 24
- 38: Nro ejecutable: 34 / Fase: Estructura / Sector: Obra general / Fuente: Agregado operativo / terminación / Predecesoras ejecutables: 21,33 / Limpieza general periódica cada 7 días. Tarea recurrente agregada fuera del ODS para mantener orden, seguridad y avance limpio de obra.
- 39: Fase lógica de obra. Cantidad de tareas ejecutables: 17
- 40: Nro ejecutable: 35 / Fase: Mampostería y cubierta / Sector: PB exterior / Fuente: Mampostería / Tarea catálogo: Paredes de ladrillo hueco portante 13 y 18 / Precio catálogo: $11.385,00 / Predecesoras ejecutables: 22,20
- 41: Nro ejecutable: 36 / Fase: Mampostería y cubierta / Sector: PB interior / Fuente: Mampostería / Tarea catálogo: Paredes de ladrillo hueco 8 y 12 / Precio catálogo: $11.385,00 / Predecesoras ejecutables: 35
- 42: Nro ejecutable: 37 / Fase: Mampostería y cubierta / Sector: Cocina PB / Fuente: Mampostería / Tarea catálogo: Paredes bajo mesada / Precio catálogo: $10.120,00 / Predecesoras ejecutables: 36
- 43: Nro ejecutable: 38 / Fase: Mampostería y cubierta / Sector: PA exterior / Fuente: Mampostería / Tarea catálogo: Paredes de ladrillo hueco portante 13 y 18 / Precio catálogo: $11.385,00 / Predecesoras ejecutables: 25,29
- 44: Nro ejecutable: 39 / Fase: Mampostería y cubierta / Sector: PA interior / Fuente: Mampostería / Tarea catálogo: Paredes de ladrillo hueco 8 y 12 / Precio catálogo: $11.385,00 / Predecesoras ejecutables: 38
- 45: Nro ejecutable: 40 / Fase: Mampostería y cubierta / Sector: Cubierta / perímetro / Fuente: Mampostería / Tarea catálogo: Mojinetes perimetral / Precio catálogo: $10.499,50 / Predecesoras ejecutables: 38
- 46: Nro ejecutable: 41 / Fase: Mampostería y cubierta / Sector: Patio / Fuente: Mampostería / Tarea catálogo: Parrillero completo / Precio catálogo: $253.000,00 / Predecesoras ejecutables: 14,35
- 47: Nro ejecutable: 42 / Fase: Mampostería y cubierta / Sector: Obra general / Fuente: Agregado operativo / terminación / Predecesoras ejecutables: 34,41 / Limpieza general periódica cada 7 días. Tarea recurrente agregada fuera del ODS para mantener orden, seguridad y avance limpio de obra.
- 48: Nro ejecutable: 43 / Fase: Mampostería y cubierta / Sector: Cubierta general / Fuente: Cubiertas / Tarea catálogo: Techos de estructura metálica y chapa / Precio catálogo: $20.240,00 / Predecesoras ejecutables: 26,40
- 49: Nro ejecutable: 44 / Fase: Mampostería y cubierta / Sector: Cubierta general / Fuente: Cubiertas / Tarea catálogo: Colocar chapas solo / Precio catálogo: $4.807,00 / Predecesoras ejecutables: 43
- 50: Nro ejecutable: 45 / Fase: Mampostería y cubierta / Sector: Cubierta general / Fuente: Cubiertas / Tarea catálogo: Colocar zinguería / Precio catálogo: $4.807,00 / Predecesoras ejecutables: 44
- 51: Nro ejecutable: 46 / Fase: Mampostería y cubierta / Sector: Mojinetes / Fuente: Cubiertas / Tarea catálogo: Membrana en mojinete / Precio catálogo: $12.650,00 / Predecesoras ejecutables: 40,45
- 52: Nro ejecutable: 47 / Fase: Mampostería y cubierta / Sector: Terraza técnica / losa / Fuente: Suelos / Tarea catálogo: H° de pendiente (molido+carpeta+membrana) / Precio catálogo: $18.975,00 / Predecesoras ejecutables: 26,30
- 53: Nro ejecutable: 48 / Fase: Mampostería y cubierta / Sector: Cubierta / impermeabilización / Fuente: Cubiertas / Tarea catálogo: Colocar membrana / Precio catálogo: $29.095,00 / Predecesoras ejecutables: 47
- 54: Nro ejecutable: 49 / Fase: Mampostería y cubierta / Sector: Cubierta / impermeabilización / Fuente: Cubiertas / Tarea catálogo: Pintar pintura asfáltica / Precio catálogo: $4.427,50 / Predecesoras ejecutables: 48
- 55: Nro ejecutable: 50 / Fase: Mampostería y cubierta / Sector: Aberturas PB / PA / Fuente: Terminaciones / Tarea catálogo: Colocar Ventanas o premarco / Precio catálogo: $25.300,00 / Predecesoras ejecutables: 35,38,39
- 56: Nro ejecutable: 51 / Fase: Mampostería y cubierta / Sector: Obra general / Fuente: Agregado operativo / terminación / Predecesoras ejecutables: 42,50 / Limpieza general periódica cada 7 días. Tarea recurrente agregada fuera del ODS para mantener orden, seguridad y avance limpio de obra.

| ID | WBS | Task | Duration | Predecessors |
| --- | --- | --- | --- | --- |
| 57 | 1.5 | **Instalaciones embutidas** | 1d |  |
| 58 | 1.5.1 | PB / tablero — Colocar tablero general | 1d | 8, 40 |
| 59 | 1.5.2 | PB — Cañerías de alimentación, canaletas y cajas | 4d | 40, 41, 58 |
| 60 | 1.5.3 | PA — Cañerías de alimentación, canaletas y cajas | 4d | 43, 44, 58 |
| 61 | 1.5.4 | PB — Bocas de iluminación, cableado y cajas | 3d | 59 |
| 62 | 1.5.5 | PA — Bocas de iluminación, cableado y cajas | 3d | 60 |
| 63 | 1.5.6 | PB / PA — Tomas de TV / Tel | 1d | 59, 60 |
| 64 | 1.5.7 | Cocina / lavadero — Gas: colocar cajas | 1d | 42 |
| 65 | 1.5.8 | Cocina / lavadero — Gas: cañerías | 3d | 64 |
| 66 | 1.5.9 | Cocina / lavadero — Gas: picos | 1d | 65 |
| 67 | 1.5.10 | Exterior cloacal — Excavar zanja y colocar caño 110 | 3d | 23 |
| 68 | 1.5.11 | Exterior cloacal — Cámara 60 x 60 | 1d | 67 |
| 69 | 1.5.12 | Baño PB — Distribución baño | 2d | 41, 67 |
| 70 | 1.5.13 | Baño PA — Distribución baño | 2d | 44, 67 |
| 71 | 1.5.14 | Cocina PB — Distribución cocina | 2d | 42, 67 |
| 72 | 1.5.15 | PB / PA — Cañería 110 por piso o paredes | 2d | 69, 70, 71 |
| 73 | 1.5.16 | Exterior / cisterna — Colocar cisterna enterrada 1000 l | 2d | 9, 23 |
| 74 | 1.5.17 | Cubierta / tanque — Hacer base tanque de reserva | 1d | 34 |
| 75 | 1.5.18 | Cubierta / tanque — Colocar tanque elevado | 1d | 74 |
| 76 | 1.5.19 | PB / PA — Subida a tanque y bajada troncales | 3d | 75 |
| 77 | 1.5.20 | Cocina / lavadero — Alimentación a termotanque | 1d | 76 |
| 78 | 1.5.21 | Baños / cocina / lavadero — Distribución de baño, cocina y lavadero | 4d | 69, 70, 71, 76, 77 |
| 79 | 1.5.22 | Obra general — Limpieza general de obra - semana 7 | 1d | 56, 78 |
| 80 | 1.6 | **Revoques y cielorrasos** | 1d |  |
| 81 | 1.6.1 | PB exterior — C/A vertical + grueso + fino | 5d | 55, 59, 69, 78 |
| 82 | 1.6.2 | PB interior — Grueso y fino | 5d | 55, 59, 69, 78 |
| 83 | 1.6.3 | PA exterior — C/A vertical + grueso + fino | 5d | 55, 60, 70, 78 |
| 84 | 1.6.4 | PA interior — Grueso y fino | 5d | 55, 60, 70, 78 |
| 85 | 1.6.5 | Frente — Material acrílico de frente | 3d | 81, 83 |
| 86 | 1.6.6 | PB interior — Enduido en yeso | 4d | 82 |
| 87 | 1.6.7 | PA interior — Enduido en yeso | 4d | 84 |
| 88 | 1.6.8 | Aberturas / aristas — Cantoneras de yeso | 2d | 81, 82, 83, 84 |
| 89 | 1.6.9 | PB — Cielorraso suspendido en durlock | 4d | 82, 61 |
| 90 | 1.6.10 | PA — Cielorraso suspendido en durlock | 4d | 84, 62 |
| 91 | 1.6.11 | Frente — Revestimiento exterior de frente | 3d | 85, 55 |
| 92 | 1.6.12 | Laterales / contrafrente — Revestimiento exterior laterales y contrafrente | 3d | 81, 83, 55 |
| 93 | 1.6.13 | Obra general — Limpieza general de obra - semana 8 | 1d | 79, 90, 92 |

Notes:
- 57: Fase lógica de obra. Cantidad de tareas ejecutables: 22
- 58: Nro ejecutable: 52 / Fase: Instalaciones embutidas / Sector: PB / tablero / Fuente: Electricidad / Tarea catálogo: Colocar tablero general / Precio catálogo: $53.130,00 / Predecesoras ejecutables: 6,35
- 59: Nro ejecutable: 53 / Fase: Instalaciones embutidas / Sector: PB / Fuente: Electricidad / Tarea catálogo: Cañerías de alimentación Canaletas y cajas / Precio catálogo: $15.180,00 / Predecesoras ejecutables: 35,36,52
- 60: Nro ejecutable: 54 / Fase: Instalaciones embutidas / Sector: PA / Fuente: Electricidad / Tarea catálogo: Cañerías de alimentación Canaletas y cajas / Precio catálogo: $15.180,00 / Predecesoras ejecutables: 38,39,52
- 61: Nro ejecutable: 55 / Fase: Instalaciones embutidas / Sector: PB / Fuente: Electricidad / Tarea catálogo: Bocas de iluminación Cableado y cajas / Precio catálogo: $30.360,00 / Predecesoras ejecutables: 53
- 62: Nro ejecutable: 56 / Fase: Instalaciones embutidas / Sector: PA / Fuente: Electricidad / Tarea catálogo: Bocas de iluminación Cableado y cajas / Precio catálogo: $30.360,00 / Predecesoras ejecutables: 54
- 63: Nro ejecutable: 57 / Fase: Instalaciones embutidas / Sector: PB / PA / Fuente: Electricidad / Tarea catálogo: Tomas de Tv. Tel / Precio catálogo: $29.095,00 / Predecesoras ejecutables: 53,54
- 64: Nro ejecutable: 58 / Fase: Instalaciones embutidas / Sector: Cocina / lavadero / Fuente: Gas / Tarea catálogo: Colocar cajas / Precio catálogo: $22.770,00 / Predecesoras ejecutables: 37
- 65: Nro ejecutable: 59 / Fase: Instalaciones embutidas / Sector: Cocina / lavadero / Fuente: Gas / Tarea catálogo: Cañerias / Precio catálogo: $31.625,00 / Predecesoras ejecutables: 58
- 66: Nro ejecutable: 60 / Fase: Instalaciones embutidas / Sector: Cocina / lavadero / Fuente: Gas / Tarea catálogo: Picos / Precio catálogo: $31.625,00 / Predecesoras ejecutables: 59
- 67: Nro ejecutable: 61 / Fase: Instalaciones embutidas / Sector: Exterior cloacal / Fuente: Cloacales / Tarea catálogo: Excavar zanja y colocar caño 110 / Precio catálogo: $3.795,00 / Predecesoras ejecutables: 20
- 68: Nro ejecutable: 62 / Fase: Instalaciones embutidas / Sector: Exterior cloacal / Fuente: Cloacales / Tarea catálogo: Camara 60 x 60 / Precio catálogo: $27.830,00 / Predecesoras ejecutables: 61
- 69: Nro ejecutable: 63 / Fase: Instalaciones embutidas / Sector: Baño PB / Fuente: Cloacales / Tarea catálogo: Distribucion baño / Precio catálogo: $145.475,00 / Predecesoras ejecutables: 36,61
- 70: Nro ejecutable: 64 / Fase: Instalaciones embutidas / Sector: Baño PA / Fuente: Cloacales / Tarea catálogo: Distribucion baño / Precio catálogo: $145.475,00 / Predecesoras ejecutables: 39,61
- 71: Nro ejecutable: 65 / Fase: Instalaciones embutidas / Sector: Cocina PB / Fuente: Cloacales / Tarea catálogo: Distribucion cocina / Precio catálogo: $145.475,00 / Predecesoras ejecutables: 37,61
- 72: Nro ejecutable: 66 / Fase: Instalaciones embutidas / Sector: PB / PA / Fuente: Cloacales / Tarea catálogo: Cañeria 110 por piso o paredes / Precio catálogo: $20.240,00 / Predecesoras ejecutables: 63,64,65
- 73: Nro ejecutable: 67 / Fase: Instalaciones embutidas / Sector: Exterior / cisterna / Fuente: Agua / Tarea catálogo: Colocar cisterna enterrada 1000 l / Precio catálogo: $341.550,00 / Predecesoras ejecutables: 7,20
- 74: Nro ejecutable: 68 / Fase: Instalaciones embutidas / Sector: Cubierta / tanque / Fuente: Agua / Tarea catálogo: Hacer base tanque de reserva / Precio catálogo: $323.840,00 / Predecesoras ejecutables: 30
- 75: Nro ejecutable: 69 / Fase: Instalaciones embutidas / Sector: Cubierta / tanque / Fuente: Agua / Tarea catálogo: Colocar taque elevado / Precio catálogo: $75.900,00 / Predecesoras ejecutables: 68
- 76: Nro ejecutable: 70 / Fase: Instalaciones embutidas / Sector: PB / PA / Fuente: Agua / Tarea catálogo: Subida a tanque y bajada troncales / Precio catálogo: $13.662,00 / Predecesoras ejecutables: 69
- 77: Nro ejecutable: 71 / Fase: Instalaciones embutidas / Sector: Cocina / lavadero / Fuente: Agua / Tarea catálogo: Alimentacion a termotanque / Precio catálogo: $13.662,00 / Predecesoras ejecutables: 70
- 78: Nro ejecutable: 72 / Fase: Instalaciones embutidas / Sector: Baños / cocina / lavadero / Fuente: Agua / Tarea catálogo: distribucion de baño/cocina lavadero / Precio catálogo: $194.810,00 / Predecesoras ejecutables: 63,64,65,70,71
- 79: Nro ejecutable: 73 / Fase: Instalaciones embutidas / Sector: Obra general / Fuente: Agregado operativo / terminación / Predecesoras ejecutables: 51,72 / Limpieza general periódica cada 7 días. Tarea recurrente agregada fuera del ODS para mantener orden, seguridad y avance limpio de obra.
- 80: Fase lógica de obra. Cantidad de tareas ejecutables: 13
- 81: Nro ejecutable: 74 / Fase: Revoques y cielorrasos / Sector: PB exterior / Fuente: Revoques / Tarea catálogo: C/A vertical + Grueso + Fino / Precio catálogo: $10.626,00 / Predecesoras ejecutables: 50,53,63,72
- 82: Nro ejecutable: 75 / Fase: Revoques y cielorrasos / Sector: PB interior / Fuente: Revoques / Tarea catálogo: Grueso y Fino / Precio catálogo: $8.222,50 / Predecesoras ejecutables: 50,53,63,72
- 83: Nro ejecutable: 76 / Fase: Revoques y cielorrasos / Sector: PA exterior / Fuente: Revoques / Tarea catálogo: C/A vertical + Grueso + Fino / Precio catálogo: $10.626,00 / Predecesoras ejecutables: 50,54,64,72
- 84: Nro ejecutable: 77 / Fase: Revoques y cielorrasos / Sector: PA interior / Fuente: Revoques / Tarea catálogo: Grueso y Fino / Precio catálogo: $8.222,50 / Predecesoras ejecutables: 50,54,64,72
- 85: Nro ejecutable: 78 / Fase: Revoques y cielorrasos / Sector: Frente / Fuente: Revoques / Tarea catálogo: Material acrílico de frente / Precio catálogo: $6.957,50 / Predecesoras ejecutables: 74,76
- 86: Nro ejecutable: 79 / Fase: Revoques y cielorrasos / Sector: PB interior / Fuente: Revoques / Tarea catálogo: Enduido en yeso / Precio catálogo: $6.957,50 / Predecesoras ejecutables: 75
- 87: Nro ejecutable: 80 / Fase: Revoques y cielorrasos / Sector: PA interior / Fuente: Revoques / Tarea catálogo: Enduido en yeso / Precio catálogo: $6.957,50 / Predecesoras ejecutables: 77
- 88: Nro ejecutable: 81 / Fase: Revoques y cielorrasos / Sector: Aberturas / aristas / Fuente: Revoques / Tarea catálogo: Cantoneras de yeso / Precio catálogo: $10.752,50 / Predecesoras ejecutables: 74,75,76,77
- 89: Nro ejecutable: 82 / Fase: Revoques y cielorrasos / Sector: PB / Fuente: Revoques / Tarea catálogo: Cielorraso suspendido en durlock / Precio catálogo: $12.650,00 / Predecesoras ejecutables: 75,55
- 90: Nro ejecutable: 83 / Fase: Revoques y cielorrasos / Sector: PA / Fuente: Revoques / Tarea catálogo: Cielorraso suspendido en durlock / Precio catálogo: $12.650,00 / Predecesoras ejecutables: 77,56
- 91: Nro ejecutable: 84 / Fase: Revoques y cielorrasos / Sector: Frente / Fuente: Agregado operativo / terminación / Predecesoras ejecutables: 78,50 / Agregado solicitado: revestimiento exterior fuera del ODS. Va después de revoques exteriores, premarcos y terminación de frente.
- 92: Nro ejecutable: 85 / Fase: Revoques y cielorrasos / Sector: Laterales / contrafrente / Fuente: Agregado operativo / terminación / Predecesoras ejecutables: 74,76,50 / Agregado solicitado: revestimiento exterior fuera del ODS. Va después de revoques exteriores y premarcos.
- 93: Nro ejecutable: 86 / Fase: Revoques y cielorrasos / Sector: Obra general / Fuente: Agregado operativo / terminación / Predecesoras ejecutables: 73,83,85 / Limpieza general periódica cada 7 días. Tarea recurrente agregada fuera del ODS para mantener orden, seguridad y avance limpio de obra.

| ID | WBS | Task | Duration | Predecessors |
| --- | --- | --- | --- | --- |
| 94 | 1.7 | **Contrapisos, pisos y revestimientos** | 1d |  |
| 95 | 1.7.1 | PB general — Contra pisos | 4d | 72, 78 |
| 96 | 1.7.2 | PA general — Contra pisos | 4d | 72, 78 |
| 97 | 1.7.3 | PB general — Carpeta 3x1 | 3d | 95, 82 |
| 98 | 1.7.4 | PA general — Carpeta 3x1 | 3d | 96, 84 |
| 99 | 1.7.5 | Cocina / lavadero — Banquinas con carpeta | 1d | 42, 71, 97 |
| 100 | 1.7.6 | PB / PA — Juntas de dilatación y tomarlas | 1d | 97, 98 |
| 101 | 1.7.7 | PB estar / comedor / cocina — Pisos porcelanato sin zócalos | 5d | 97, 100 |
| 102 | 1.7.8 | PA dormitorios — Pisos flotantes con zócalos | 3d | 98, 100 |
| 103 | 1.7.9 | Cocina PB — Revestimiento en pared sin guardas | 3d | 82, 71, 78 |
| 104 | 1.7.10 | Baño PB — Revestimiento en pared sin guardas | 3d | 82, 69, 78 |
| 105 | 1.7.11 | Baño PA — Revestimiento en pared sin guardas | 3d | 84, 70, 78 |
| 106 | 1.7.12 | Baños / cocina — Colocar guardas | 1d | 103, 104, 105 |
| 107 | 1.7.13 | PB / PA — Zócalos con corte | 2d | 101, 102 |
| 108 | 1.7.14 | Obra general — Limpieza general de obra - semana 9 | 1d | 93, 107 |
| 109 | 1.8 | **Pintura interior** | 1d |  |
| 110 | 1.8.1 | Interior PB / PA — Molduras en moldes | 2d | 86, 87 |
| 111 | 1.8.2 | Aberturas PB / PA — Frisos perimetrales aberturas | 2d | 55, 88 |
| 112 | 1.8.3 | Interior PB — Sellador y preparación para pintura interior PB | 2d | 86, 89, 110, 111 |
| 113 | 1.8.4 | Interior PA — Sellador y preparación para pintura interior PA | 2d | 87, 90, 110, 111 |
| 114 | 1.8.5 | Interior PB — Pintura interior primera mano PB | 2d | 112 |
| 115 | 1.8.6 | Interior PA — Pintura interior primera mano PA | 2d | 113 |
| 116 | 1.8.7 | Interior PB — Pintura interior terminación PB | 2d | 114 |
| 117 | 1.8.8 | Interior PA — Pintura interior terminación PA | 2d | 115 |
| 118 | 1.8.9 | Obra general — Limpieza general de obra - semana 10 | 1d | 108, 116, 117, 91, 92 |

Notes:
- 94: Fase lógica de obra. Cantidad de tareas ejecutables: 14
- 95: Nro ejecutable: 87 / Fase: Contrapisos, pisos y revestimientos / Sector: PB general / Fuente: Suelos / Tarea catálogo: Contra pisos / Precio catálogo: $6.325,00 / Predecesoras ejecutables: 66,72
- 96: Nro ejecutable: 88 / Fase: Contrapisos, pisos y revestimientos / Sector: PA general / Fuente: Suelos / Tarea catálogo: Contra pisos / Precio catálogo: $6.325,00 / Predecesoras ejecutables: 66,72
- 97: Nro ejecutable: 89 / Fase: Contrapisos, pisos y revestimientos / Sector: PB general / Fuente: Suelos / Tarea catálogo: Carpeta 3x1 / Precio catálogo: $6.325,00 / Predecesoras ejecutables: 87,75
- 98: Nro ejecutable: 90 / Fase: Contrapisos, pisos y revestimientos / Sector: PA general / Fuente: Suelos / Tarea catálogo: Carpeta 3x1 / Precio catálogo: $6.325,00 / Predecesoras ejecutables: 88,77
- 99: Nro ejecutable: 91 / Fase: Contrapisos, pisos y revestimientos / Sector: Cocina / lavadero / Fuente: Suelos / Tarea catálogo: Banquinas c/carpeta / Precio catálogo: $15.812,50 / Predecesoras ejecutables: 37,65,89
- 100: Nro ejecutable: 92 / Fase: Contrapisos, pisos y revestimientos / Sector: PB / PA / Fuente: Suelos / Tarea catálogo: Juntas de dilatación y tomarlas / Precio catálogo: $2.909,50 / Predecesoras ejecutables: 89,90
- 101: Nro ejecutable: 93 / Fase: Contrapisos, pisos y revestimientos / Sector: PB estar / comedor / cocina / Fuente: Revestimientos / Tarea catálogo: Pisos Porcelanato sin zocales / Precio catálogo: $11.385,00 / Predecesoras ejecutables: 89,92
- 102: Nro ejecutable: 94 / Fase: Contrapisos, pisos y revestimientos / Sector: PA dormitorios / Fuente: Revestimientos / Tarea catálogo: Pisos flotantes con zocalos / Precio catálogo: $10.120,00 / Predecesoras ejecutables: 90,92
- 103: Nro ejecutable: 95 / Fase: Contrapisos, pisos y revestimientos / Sector: Cocina PB / Fuente: Revestimientos / Tarea catálogo: Revestimiento en pared sin guardas / Precio catálogo: $12.650,00 / Predecesoras ejecutables: 75,65,72
- 104: Nro ejecutable: 96 / Fase: Contrapisos, pisos y revestimientos / Sector: Baño PB / Fuente: Revestimientos / Tarea catálogo: Revestimiento en pared sin guardas / Precio catálogo: $12.650,00 / Predecesoras ejecutables: 75,63,72
- 105: Nro ejecutable: 97 / Fase: Contrapisos, pisos y revestimientos / Sector: Baño PA / Fuente: Revestimientos / Tarea catálogo: Revestimiento en pared sin guardas / Precio catálogo: $12.650,00 / Predecesoras ejecutables: 77,64,72
- 106: Nro ejecutable: 98 / Fase: Contrapisos, pisos y revestimientos / Sector: Baños / cocina / Fuente: Revestimientos / Tarea catálogo: Colocar guardas / Precio catálogo: $6.072,00 / Predecesoras ejecutables: 95,96,97
- 107: Nro ejecutable: 99 / Fase: Contrapisos, pisos y revestimientos / Sector: PB / PA / Fuente: Revestimientos / Tarea catálogo: Zocalos con corte / Precio catálogo: $3.795,00 / Predecesoras ejecutables: 93,94
- 108: Nro ejecutable: 100 / Fase: Contrapisos, pisos y revestimientos / Sector: Obra general / Fuente: Agregado operativo / terminación / Predecesoras ejecutables: 86,99 / Limpieza general periódica cada 7 días. Tarea recurrente agregada fuera del ODS para mantener orden, seguridad y avance limpio de obra.
- 109: Fase lógica de obra. Cantidad de tareas ejecutables: 9
- 110: Nro ejecutable: 101 / Fase: Pintura interior / Sector: Interior PB / PA / Fuente: Terminaciones / Tarea catálogo: Molduras en moldes / Precio catálogo: $12.650,00 / Predecesoras ejecutables: 79,80
- 111: Nro ejecutable: 102 / Fase: Pintura interior / Sector: Aberturas PB / PA / Fuente: Terminaciones / Tarea catálogo: Frisos perimetrales aberturas / Precio catálogo: $8.222,50 / Predecesoras ejecutables: 50,81
- 112: Nro ejecutable: 103 / Fase: Pintura interior / Sector: Interior PB / Fuente: Agregado operativo / terminación / Predecesoras ejecutables: 79,82,101,102 / Agregado solicitado: pintura interior fuera del ODS.
- 113: Nro ejecutable: 104 / Fase: Pintura interior / Sector: Interior PA / Fuente: Agregado operativo / terminación / Predecesoras ejecutables: 80,83,101,102 / Agregado solicitado: pintura interior fuera del ODS.
- 114: Nro ejecutable: 105 / Fase: Pintura interior / Sector: Interior PB / Fuente: Agregado operativo / terminación / Predecesoras ejecutables: 103 / Agregado solicitado: pintura interior fuera del ODS.
- 115: Nro ejecutable: 106 / Fase: Pintura interior / Sector: Interior PA / Fuente: Agregado operativo / terminación / Predecesoras ejecutables: 104 / Agregado solicitado: pintura interior fuera del ODS.
- 116: Nro ejecutable: 107 / Fase: Pintura interior / Sector: Interior PB / Fuente: Agregado operativo / terminación / Predecesoras ejecutables: 105 / Agregado solicitado: pintura interior fuera del ODS.
- 117: Nro ejecutable: 108 / Fase: Pintura interior / Sector: Interior PA / Fuente: Agregado operativo / terminación / Predecesoras ejecutables: 106 / Agregado solicitado: pintura interior fuera del ODS.
- 118: Nro ejecutable: 109 / Fase: Pintura interior / Sector: Obra general / Fuente: Agregado operativo / terminación / Predecesoras ejecutables: 100,107,108,84,85 / Limpieza general periódica cada 7 días. Tarea recurrente agregada fuera del ODS para mantener orden, seguridad y avance limpio de obra.

| ID | WBS | Task | Duration | Predecessors |
| --- | --- | --- | --- | --- |
| 119 | 1.9 | **Terminaciones** | 1d |  |
| 120 | 1.9.1 | PB / PA — Colocar puertas placas | 2d | 101, 102, 107, 116, 117 |
| 121 | 1.9.2 | Aberturas PB / PA — Colocar ventanas con cortina enrollable | 2d | 55, 91, 92 |
| 122 | 1.9.3 | Baños / cocina / lavadero — Colocar rejillas de ventilación | 1d | 66, 103, 104, 105 |
| 123 | 1.9.4 | Cocina PB — Colocar mesada | 1d | 99, 103 |
| 124 | 1.9.5 | Baño PB / cocina / lavadero — Colocación artefactos | 2d | 104, 123, 78, 72, 116 |
| 125 | 1.9.6 | Baño PA — Colocación artefactos | 1d | 105, 78, 72, 117 |
| 126 | 1.9.7 | Baño PA — Colocación bañera | 1d | 105, 78, 72, 117 |
| 127 | 1.9.8 | Exterior / aberturas — Colocar rejas amuradas | 2d | 121, 91, 92 |
| 128 | 1.9.9 | Frente / cochera — Colocar portón levadizo | 1d | 35, 91 |
| 129 | 1.10 | **Parquizado y cierre exterior** | 1d |  |
| 130 | 1.10.1 | Exterior / jardín — Nivelación exterior para parquizado | 2d | 127, 128, 92 |
| 131 | 1.10.2 | Exterior / jardín — Colocación de tierra negra y preparación de canteros | 2d | 130 |
| 132 | 1.10.3 | Exterior / jardín — Colocación de césped y plantas | 2d | 131 |
| 133 | 1.10.4 | Obra general — Limpieza general de obra - cierre final | 1d | 118, 132, 120, 122, 124, 125, 126, 127, 128 |

Notes:
- 119: Fase lógica de obra. Cantidad de tareas ejecutables: 9
- 120: Nro ejecutable: 110 / Fase: Terminaciones / Sector: PB / PA / Fuente: Terminaciones / Tarea catálogo: Colocar puertas placas / Precio catálogo: $25.300,00 / Predecesoras ejecutables: 93,94,99,107,108
- 121: Nro ejecutable: 111 / Fase: Terminaciones / Sector: Aberturas PB / PA / Fuente: Terminaciones / Tarea catálogo: Colocar ventanas con Conrtina enrollable / Precio catálogo: $56.925,00 / Predecesoras ejecutables: 50,84,85
- 122: Nro ejecutable: 112 / Fase: Terminaciones / Sector: Baños / cocina / lavadero / Fuente: Terminaciones / Tarea catálogo: Colocar rejillas de ventilacion / Precio catálogo: $10.120,00 / Predecesoras ejecutables: 60,95,96,97
- 123: Nro ejecutable: 113 / Fase: Terminaciones / Sector: Cocina PB / Fuente: Terminaciones / Tarea catálogo: Colocar mesada / Precio catálogo: $31.625,00 / Predecesoras ejecutables: 91,95
- 124: Nro ejecutable: 114 / Fase: Terminaciones / Sector: Baño PB / cocina / lavadero / Fuente: Agua / Tarea catálogo: Colocacion artefactos / Precio catálogo: $43.010,00 / Predecesoras ejecutables: 96,113,72,66,107
- 125: Nro ejecutable: 115 / Fase: Terminaciones / Sector: Baño PA / Fuente: Agua / Tarea catálogo: Colocacion artefactos / Precio catálogo: $43.010,00 / Predecesoras ejecutables: 97,72,66,108
- 126: Nro ejecutable: 116 / Fase: Terminaciones / Sector: Baño PA / Fuente: Agua / Tarea catálogo: Colocacion bañera / Precio catálogo: $174.570,00 / Predecesoras ejecutables: 97,72,66,108
- 127: Nro ejecutable: 117 / Fase: Terminaciones / Sector: Exterior / aberturas / Fuente: Terminaciones / Tarea catálogo: Colocar Rejas amuradas / Precio catálogo: $59.455,00 / Predecesoras ejecutables: 111,84,85
- 128: Nro ejecutable: 118 / Fase: Terminaciones / Sector: Frente / cochera / Fuente: Terminaciones / Tarea catálogo: Colocar porton levadizo / Precio catálogo: $158.125,00 / Predecesoras ejecutables: 31,84
- 129: Fase lógica de obra. Cantidad de tareas ejecutables: 4
- 130: Nro ejecutable: 119 / Fase: Parquizado y cierre exterior / Sector: Exterior / jardín / Fuente: Agregado operativo / terminación / Predecesoras ejecutables: 117,118,85 / Agregado solicitado: parquizado fuera del ODS. Debe ir después de trabajos pesados exteriores.
- 131: Nro ejecutable: 120 / Fase: Parquizado y cierre exterior / Sector: Exterior / jardín / Fuente: Agregado operativo / terminación / Predecesoras ejecutables: 119 / Agregado solicitado: parquizado fuera del ODS.
- 132: Nro ejecutable: 121 / Fase: Parquizado y cierre exterior / Sector: Exterior / jardín / Fuente: Agregado operativo / terminación / Predecesoras ejecutables: 120 / Agregado solicitado: parquizado fuera del ODS.
- 133: Nro ejecutable: 122 / Fase: Parquizado y cierre exterior / Sector: Obra general / Fuente: Agregado operativo / terminación / Predecesoras ejecutables: 109,121,110,112,114,115,116,117,118 / Limpieza general final. Se suma a la limpieza periódica cada 7 días.
