# Edificio 10 plantas — 4 deptos por piso (torre)

Schedule from MS Project XML.

## Schedule

| ID | WBS | Task | Duration | Predecessors |
| --- | --- | --- | --- | --- |
| 1 | 1 | **Edificio 10 plantas — 4 deptos por piso (torre)** | 1d |  |
| 2 | 1.1 | **Preparación** | 1d |  |
| 3 | 1.1.1 | Relevamiento planialtimétrico y medición | 6d |  |
| 4 | 1.1.2 | Proyecto ejecutivo e ingeniería de detalle | 35d | 3 |
| 5 | 1.1.3 | Permiso de obra y aprobaciones municipales | 40d | 4 |
| 6 | 1.1.4 | Obrador, vallado, grúa torre y servicios de obra | 12d | 3 |
| 7 | 1.1.5 | Replanteo general y trazado de ejes | 5d | 5, 6 |
| 8 | 1.2 | **Estructura** | 1d |  |
| 9 | 1.2.1 | Movimiento de suelos y excavación de subsuelo | 18d |  |
| 10 | 1.2.2 | Submuración perimetral y muro colado | 20d | 9 |
| 11 | 1.2.3 | Fundaciones — pilotes y cabezales de hormigón | 18d | 10 |
| 12 | 1.2.4 | Fundaciones — platea de subsuelo de cocheras | 14d | 11 |
| 13 | 1.2.5 | Estructura de H°A° — subsuelo de cocheras | 12d | 12 |
| 14 | 1.2.6 | Estructura de H°A° — columnas, tabiques y losa PB | 8d | 13 |
| 15 | 1.2.7 | Estructura de H°A° — columnas, tabiques y losa 1° | 8d | 14 |
| 16 | 1.2.8 | Estructura de H°A° — columnas, tabiques y losa 2° | 8d | 15 |
| 17 | 1.2.9 | Estructura de H°A° — columnas, tabiques y losa 3° | 8d | 16 |
| 18 | 1.2.10 | Estructura de H°A° — columnas, tabiques y losa 4° | 8d | 17 |
| 19 | 1.2.11 | Estructura de H°A° — columnas, tabiques y losa 5° | 8d | 18 |
| 20 | 1.2.12 | Estructura de H°A° — columnas, tabiques y losa 6° | 8d | 19 |
| 21 | 1.2.13 | Estructura de H°A° — columnas, tabiques y losa 7° | 8d | 20 |
| 22 | 1.2.14 | Estructura de H°A° — columnas, tabiques y losa 8° | 8d | 21 |
| 23 | 1.2.15 | Estructura de H°A° — columnas, tabiques y losa 9° | 8d | 22 |
| 24 | 1.2.16 | Estructura de H°A° — sala de máquinas y tanque superior | 8d |  |
| 25 | 1.2.17 | Mampostería de elevación y tabiques — PB | 6d | 14 |
| 26 | 1.2.18 | Mampostería de elevación y tabiques — 1° | 6d | 25 |
| 27 | 1.2.19 | Mampostería de elevación y tabiques — 2° | 6d | 26 |
| 28 | 1.2.20 | Mampostería de elevación y tabiques — 3° | 6d | 27 |
| 29 | 1.2.21 | Mampostería de elevación y tabiques — 4° | 6d | 28 |
| 30 | 1.2.22 | Mampostería de elevación y tabiques — 5° | 6d | 29 |
| 31 | 1.2.23 | Mampostería de elevación y tabiques — 6° | 6d | 30 |
| 32 | 1.2.24 | Mampostería de elevación y tabiques — 7° | 6d | 31 |
| 33 | 1.2.25 | Mampostería de elevación y tabiques — 8° | 6d | 32 |
| 34 | 1.2.26 | Mampostería de elevación y tabiques — 9° | 6d | 33 |

| ID | WBS | Task | Duration | Predecessors |
| --- | --- | --- | --- | --- |
| 35 | 1.3 | **Instalaciones** | 1d |  |
| 36 | 1.3.1 | Instalación sanitaria — montantes y cañerías troncales | 16d |  |
| 37 | 1.3.2 | Instalación sanitaria — bocas y ramales por unidad | 20d | 36 |
| 38 | 1.3.3 | Instalación de gas — montantes y ramales por unidad | 14d |  |
| 39 | 1.3.4 | Instalación eléctrica — montantes y sala de tableros | 14d |  |
| 40 | 1.3.5 | Instalación eléctrica — cañeros y cableado por unidad | 20d | 39 |
| 41 | 1.3.6 | Instalación de incendio, presurización y detección | 12d |  |
| 42 | 1.3.7 | Instalación termomecánica — VRV y conductos | 12d |  |
| 43 | 1.3.8 | Instalación de ascensores — guías, cabinas y montaje | 18d |  |
| 44 | 1.3.9 | Instalaciones — pruebas hidráulicas y de estanqueidad | 5d | 37, 38 |
| 45 | 1.4 | **Terminaciones** | 1d |  |
| 46 | 1.4.1 | Revoques interiores por unidad | 30d |  |
| 47 | 1.4.2 | Revoque, frente vidriado y terminación de fachada | 22d | 46 |
| 48 | 1.4.3 | Cielorrasos de durlock por unidad | 18d | 46 |
| 49 | 1.4.4 | Contrapisos y carpetas de pisos | 18d | 46 |
| 50 | 1.4.5 | Colocación de pisos de porcelanato por unidad | 28d | 49 |
| 51 | 1.4.6 | Revestimientos y pisos de baños y cocinas | 22d | 49 |
| 52 | 1.4.7 | Carpinterías — aberturas de aluminio y puertas | 22d | 46 |
| 53 | 1.4.8 | Carpintería — muebles de cocina y placares por unidad | 22d | 50 |
| 54 | 1.4.9 | Terminación de cocheras, demarcación y portón | 8d | 46 |
| 55 | 1.4.10 | Pintura interior y de palieres | 28d | 48, 52 |
| 56 | 1.4.11 | Pintura y terminación de espacios comunes y hall | 12d | 47 |
| 57 | 1.4.12 | Limpieza final y entrega de unidades | 8d | 55, 51 |
