# Edificio 6 plantas — 2 deptos por piso

Schedule from MS Project XML.

## Schedule

| ID | WBS | Task | Duration | Predecessors |
| --- | --- | --- | --- | --- |
| 1 | 1 | **Edificio 6 plantas — 2 deptos por piso** | 1d |  |
| 2 | 1.1 | **Preparación** | 1d |  |
| 3 | 1.1.1 | Relevamiento planialtimétrico y medición | 5d |  |
| 4 | 1.1.2 | Proyecto ejecutivo e ingeniería de detalle | 25d | 3 |
| 5 | 1.1.3 | Permiso de obra y aprobaciones municipales | 30d | 4 |
| 6 | 1.1.4 | Obrador, vallado, grúa y servicios de obra | 8d | 3 |
| 7 | 1.1.5 | Replanteo general y trazado de ejes | 4d | 5, 6 |
| 8 | 1.2 | **Estructura** | 1d |  |
| 9 | 1.2.1 | Movimiento de suelos y excavación general | 10d |  |
| 10 | 1.2.2 | Submuración y fundaciones profundas (pilotes) | 15d | 9 |
| 11 | 1.2.3 | Fundaciones — platea y cabezales de hormigón | 12d | 10 |
| 12 | 1.2.4 | Estructura de H°A° — columnas y losa PB | 8d | 11 |
| 13 | 1.2.5 | Estructura de H°A° — columnas y losa 1° | 8d | 12 |
| 14 | 1.2.6 | Estructura de H°A° — columnas y losa 2° | 8d | 13 |
| 15 | 1.2.7 | Estructura de H°A° — columnas y losa 3° | 8d | 14 |
| 16 | 1.2.8 | Estructura de H°A° — columnas y losa 4° | 8d | 15 |
| 17 | 1.2.9 | Estructura de H°A° — columnas y losa 5° | 8d | 16 |
| 18 | 1.2.10 | Estructura de H°A° — sala de máquinas y tanque | 6d |  |
| 19 | 1.2.11 | Mampostería de elevación y tabiques — PB | 6d | 12 |
| 20 | 1.2.12 | Mampostería de elevación y tabiques — 1° | 6d | 19 |
| 21 | 1.2.13 | Mampostería de elevación y tabiques — 2° | 6d | 20 |
| 22 | 1.2.14 | Mampostería de elevación y tabiques — 3° | 6d | 21 |
| 23 | 1.2.15 | Mampostería de elevación y tabiques — 4° | 6d | 22 |
| 24 | 1.2.16 | Mampostería de elevación y tabiques — 5° | 6d | 23 |

| ID | WBS | Task | Duration | Predecessors |
| --- | --- | --- | --- | --- |
| 25 | 1.3 | **Instalaciones** | 1d |  |
| 26 | 1.3.1 | Instalación sanitaria — montantes y cañerías troncales | 12d |  |
| 27 | 1.3.2 | Instalación sanitaria — bocas y ramales por unidad | 14d | 26 |
| 28 | 1.3.3 | Instalación de gas — montantes y ramales por unidad | 10d |  |
| 29 | 1.3.4 | Instalación eléctrica — montantes y tablero general | 10d |  |
| 30 | 1.3.5 | Instalación eléctrica — cañeros y cableado por unidad | 14d | 29 |
| 31 | 1.3.6 | Instalación de incendio, presurización y detección | 8d |  |
| 32 | 1.3.7 | Instalación de ascensores — guías, contrapesos y montaje | 12d |  |
| 33 | 1.3.8 | Instalaciones — pruebas hidráulicas y de estanqueidad | 4d | 27, 28 |
| 34 | 1.4 | **Terminaciones** | 1d |  |
| 35 | 1.4.1 | Revoques interiores por unidad | 20d |  |
| 36 | 1.4.2 | Revoque y terminación de fachada | 15d | 35 |
| 37 | 1.4.3 | Cielorrasos de durlock por unidad | 12d | 35 |
| 38 | 1.4.4 | Contrapisos y carpetas de pisos | 12d | 35 |
| 39 | 1.4.5 | Colocación de pisos de porcelanato por unidad | 18d | 38 |
| 40 | 1.4.6 | Revestimientos y pisos de baños y cocinas | 15d | 38 |
| 41 | 1.4.7 | Carpinterías — aberturas de aluminio y puertas | 14d | 35 |
| 42 | 1.4.8 | Carpintería — muebles de cocina y placares por unidad | 14d | 39 |
| 43 | 1.4.9 | Pintura interior y de palieres | 18d | 37, 41 |
| 44 | 1.4.10 | Pintura y terminación de espacios comunes | 8d | 36 |
| 45 | 1.4.11 | Limpieza final y entrega de unidades | 6d | 43, 40 |
